# SWGH-RCA

Schedule from MS Project, 2015-05-05 to 2015-08-26, costs in $, A marks actual dates.

## Calendars

- Estándar: Mon-Fri 14:00-18:00, 19:00-23:00; Sat 08:00-12:00, 14:00-18:00; Sun off.

## Resources

| Resource | Group | Rate | Cost per use |
| --- | --- | --- | --- |
| Administrador | Equipo de trabajo | 1.59 |  |
| Analista | Equipo de trabajo | 1.59 |  |
| Programador 1 | Equipo de trabajo | 1.59 |  |
| Programador 2 | Equipo de trabajo | 1.59 |  |
| Equipo de Computo |  |  | 0.9 |
| Impresiones |  |  | 0.5 |
| Transporte |  |  | 0.25 |
| Alimentos |  |  | 2.5 |
| Equipo de Oficina |  |  | 0.3 |

## Schedule

| ID | WBS | Task | Type | Duration | Start | Finish | Predecessors | Complete | Remaining | Actual start | Actual finish | Total slack | Free slack | Constraint | Resources | Work | Actual work | Cost | Actual cost |
| --- | --- | --- | --- | --- | --- | --- | --- | --- | --- | --- | --- | --- | --- | --- | --- | --- | --- | --- | --- |
| 1 | 1 | **SWGH-RCA** |  | 97.38d | 2015-05-05 09:00 A | 2015-08-26 17:00 |  | 96% | 3.67d |  |  | 0d |  |  |  | 2678.75h | 1981.51h | 2,943.86 | 1,893.67 |
| 2 | 1.1 | **Inicio** |  | 97.38d | 2015-05-05 09:00 A | 2015-08-26 17:00 |  | 96% | 3.67d |  |  | 0d |  |  |  | 2678.75h | 1981.51h | 2,943.86 | 1,893.67 |
| 3 | 1.1.1 | **INICIACION** |  | 7d | 2015-05-05 09:00 A | 2015-05-12 23:00 |  | 93% | 0.51d |  |  | 0d |  |  | Analista; Programador 2; Alimentos [50%]; Equipo de Computo; Equipo de Oficina [50%]; Impresiones [50%]; Administrador; Programador 1; Transporte [50%] | 466h | 431.72h | 439.75 | 408.44 |
| 4 | 1.1.1.1 | **Gestion de Integracion** |  | 1.75d | 2015-05-05 09:00 A | 2015-05-06 21:00 |  | 87% | 0.24d |  |  | 5.25d |  |  | Analista | 28h | 24.17h | 23.18 | 20.17 |
| 5 | 1.1.1.1.1 | Busqueda de la empresa | manual | 2h | 2015-05-05 09:00 A | 2015-05-05 11:00 A |  | 100% |  |  |  |  |  |  |  | 2h | 2h |  |  |
| 6 | 1.1.1.1.2 | Reunion con el patrocinador | manual | 2h | 2015-05-05 14:00 A | 2015-05-05 16:00 | 5 | 75% | 0.5h |  |  |  |  |  |  | 2h | 1.5h |  |  |
| 7 | 1.1.1.1.3 | Reunion con el gerente de la empresa | manual | 2h | 2015-05-05 16:00 A | 2015-05-05 18:00 | 6 | 50% | 1h |  |  |  |  |  |  | 2h | 1h |  |  |
| 8 | 1.1.1.1.4 | Recopilar informacion | manual | 2h | 2015-05-05 19:00 A | 2015-05-05 21:00 A | 7 | 100% |  |  |  |  |  |  |  | 2h | 2h |  |  |
| 9 | 1.1.1.1.5 | Enunciado del Trabajo del proyecto | manual | 2h | 2015-05-05 21:00 A | 2015-05-05 23:00 A | 8 | 100% |  |  |  |  |  |  |  | 2h | 2h |  |  |
| 10 | 1.1.1.1.6 | Acta de Constitucion |  | 6h | 2015-05-06 14:00 A | 2015-05-06 21:00 | 9 | 89% | 0.66h |  |  | 5.25d |  | finish no earlier than 2015-05-06 19:00 | Alimentos [33.3%]; Transporte [33.3%] | 4h | 3.56h | 0.92 | 0.92 |
| 11 | 1.1.1.2 | **Gestion de Interesados** |  | 4h | 2015-05-07 09:00 A | 2015-05-07 13:00 A | 4 | 100% |  |  |  |  |  |  |  | 4h | 4h | 6.36 | 6.36 |
| 12 | 1.1.1.2.1 | Registro de Interesados | manual | 4h | 2015-05-07 09:00 A | 2015-05-07 13:00 A |  | 100% |  |  |  |  |  |  | Administrador | 4h | 4h | 6.36 | 6.36 |
| 13 | 1.1.1.3 | **Metodologia UWE** |  | 4d | 2015-05-08 14:00 A | 2015-05-12 23:00 | 11 | 95% | 0.2d |  |  | 0d |  |  | Programador 2 | 42h | 39.9h | 51.38 | 48.84 |
| 14 | 1.1.1.3.1 | Caso de Uso |  | 1d | 2015-05-08 14:00 A | 2015-05-08 23:00 |  | 95% | 0.05d |  |  | 0.95d | 0d | start no earlier than 2015-05-08 09:00 | Impresiones [50%] | 4h | 3.8h | 0.25 | 0.25 |
| 15 | 1.1.1.3.2 | Caso de Uso Especificos |  | 1d | 2015-05-09 08:00 A | 2015-05-09 18:00 | 14 | 95% | 0.05d |  |  | 1.9d | 0d | start no earlier than 2015-05-08 09:00 | Impresiones [25%] | 2h | 1.9h | 0.12 | 0.12 |
| 16 | 1.1.1.3.3 | Diagrama de Actividades |  | 2d | 2015-05-11 14:00 A | 2015-05-12 23:00 | 15 | 95% | 0.1d |  |  | 0d |  | finish no earlier than 2015-05-09 19:00 | Impresiones [25%] | 4h | 3.8h | 0.12 | 0.12 |
| 17 | 1.1.2 | Fin Fase | milestone, manual | 0d | 2015-05-13 14:00 | 2015-05-13 14:00 | 16 |  |  |  |  |  |  |  |  |  |  |  |  |
| 18 | 1.1.3 | **PLANIFICACION** |  | 35.38d | 2015-05-13 09:00 A | 2015-06-23 17:00 | 3 | 98% | 0.81d |  |  | 55d | 1.62d |  | Programador 1 | 695.25h | 491.68h | 781.66 | 465.79 |
| 19 | 1.1.3.1 | **Gestion de Integracion** |  | 9h | 2015-05-13 09:00 | 2015-05-13 18:00 |  | 100% |  | 2015-05-13 14:00 | 2015-05-13 16:00 |  |  |  |  | 2.25h | 2.25h | 3.58 | 3.58 |
| 20 | 1.1.3.1.1 | Plan para la direccion de proyecto |  | 2h | 2015-05-13 14:00 A | 2015-05-13 16:00 A |  | 100% |  |  |  |  |  |  | Analista [112.5%] | 2.25h | 2.25h | 3.58 | 3.58 |
| 21 | 1.1.3.2 | **Gestion del Alcance** |  | 33h | 2015-05-14 09:00 A | 2015-05-18 18:00 | 19 | 98% | 0.69h |  |  |  |  |  |  | 24h | 23.48h | 9.69 | 9.59 |
| 22 | 1.1.3.2.1 | Plan de Gestion del Alcance | manual | 4h | 2015-05-14 09:00 A | 2015-05-14 13:00 |  | 99% | 0.04h |  |  |  |  |  | Equipo de Oficina [50%] | 2h | 1.98h | 0.15 | 0.15 |
| 23 | 1.1.3.2.2 | Plan de Gestion de Requisitos | manual | 2h | 2015-05-14 14:00 A | 2015-05-14 16:00 | 22 | 99% | 0.02h |  |  |  |  |  | Analista | 2h | 1.98h | 3.18 | 3.15 |
| 24 | 1.1.3.2.3 | Documentacion de requisitos | manual | 4h | 2015-05-14 16:00 A | 2015-05-14 21:00 | 23 | 99% | 0.04h |  |  |  |  |  | Analista | 4h | 3.96h | 6.36 | 6.3 |
| 25 | 1.1.3.2.4 | Matriz de trazabilidad de requisitos | manual | 4h | 2015-05-14 21:00 A | 2015-05-15 02:00 | 24 | 95% | 0.2h |  |  |  |  |  |  | 4h | 3.8h |  |  |
| 26 | 1.1.3.2.5 | Enunciado del Alcance | manual | 4h | 2015-05-15 14:00 A | 2015-05-15 18:00 | 25 | 99% | 0.04h |  |  |  |  |  |  | 4h | 3.96h |  |  |
| 27 | 1.1.3.2.6 | Linea Base del Alcance | manual | 4h | 2015-05-15 19:00 A | 2015-05-15 23:00 A | 26 | 100% |  |  |  |  |  |  |  | 4h | 4h |  |  |
| 28 | 1.1.3.2.7 | Estructura de Desglose de Trabajo | manual | 4h | 2015-05-16 08:00 A | 2015-05-16 12:00 | 27 | 95% | 0.2h |  |  |  |  |  |  | 4h | 3.8h |  |  |

| ID | WBS | Task | Type | Duration | Start | Finish | Predecessors | Complete | Remaining | Total slack | Free slack | Constraint | Resources | Work | Actual work | Cost | Actual cost |
| --- | --- | --- | --- | --- | --- | --- | --- | --- | --- | --- | --- | --- | --- | --- | --- | --- | --- |
| 29 | 1.1.3.3 | **Gestion de Tiempo** |  | 33h | 2015-05-19 09:00 A | 2015-05-22 18:00 | 21 | 98% | 0.61h |  |  |  |  | 24h | 23.56h | 9.54 | 9.38 |
| 30 | 1.1.3.3.1 | Plan Gestion del Cronograma | manual | 2h | 2015-05-19 09:00 A | 2015-05-19 11:00 A |  | 100% |  |  |  |  |  | 2h | 2h |  |  |
| 31 | 1.1.3.3.2 | Matriz de asignacion de Responsables | manual | 3h | 2015-05-19 14:00 A | 2015-05-19 17:00 A | 30 | 100% |  |  |  |  |  | 3h | 3h |  |  |
| 32 | 1.1.3.3.3 | Identificacion y Secuenciamiento de Actividades | manual | 2h | 2015-05-19 14:00 A | 2015-05-19 16:00 | 30 | 95% | 0.1h |  |  |  | Analista | 2h | 1.9h | 3.18 | 3.02 |
| 33 | 1.1.3.3.4 | Diagramas de red del cronograma |  | 3h | 2015-05-20 14:00 A | 2015-05-20 17:00 A | 32 | 100% |  |  |  | start no earlier than 2015-05-20 09:00 |  | 3h | 3h |  |  |
| 34 | 1.1.3.3.5 | Estimacion de Recursos y Duracion de Actividades | manual | 4h | 2015-05-20 17:00 A | 2015-05-20 22:00 | 33 | 95% | 0.2h |  |  |  |  | 4h | 3.8h |  |  |
| 35 | 1.1.3.3.6 | Cronograma del Proyecto |  | 4h | 2015-05-21 14:00 A | 2015-05-21 18:00 A | 34 | 100% |  |  |  | start no earlier than 2015-05-21 09:00 | Analista | 4h | 4h | 6.36 | 6.36 |
| 36 | 1.1.3.3.7 | Lista de Hitos | manual | 2h | 2015-05-21 19:00 A | 2015-05-21 21:00 | 35 | 95% | 0.1h |  |  |  |  | 2h | 1.9h |  |  |
| 37 | 1.1.3.3.8 | Estructura de desglose de Recursos | manual | 4h | 2015-05-21 21:00 A | 2015-05-22 02:00 | 36 | 99% | 0.04h |  |  |  |  | 4h | 3.96h |  |  |
| 38 | 1.1.3.4 | **Gestion Costo** |  | 35h | 2015-05-23 09:00 A | 2015-05-28 19:00 | 29 | 97% | 1.12h |  |  |  | Analista; Programador 2 | 95h | 24.2h | 111.3 |  |
| 39 | 1.1.3.4.1 | Plan de Gestion de Costo | manual | 4h | 2015-05-23 09:00 A | 2015-05-23 15:00 A |  | 100% |  |  |  |  |  | 4h | 4h |  |  |
| 40 | 1.1.3.4.2 | Estimacion de Costos |  | 8h | 2015-05-25 14:00 A | 2015-05-25 23:00 | 39 | 95% | 0.4h | 0.45d | 0d | start no earlier than 2015-05-25 09:00 |  | 8h | 7.6h |  |  |
| 41 | 1.1.3.4.3 | Presupuesto del Proyecto | manual | 4h | 2015-05-26 14:00 A | 2015-05-26 18:00 | 40 | 90% | 0.4h |  |  |  |  | 4h | 3.6h |  |  |
| 42 | 1.1.3.4.4 | Linea Base de Costos | manual | 9h | 2015-05-26 19:00 A | 2015-05-27 20:00 A | 41 | 100% |  |  |  |  |  | 9h | 9h |  |  |
| 43 | 1.1.3.5 | **Gestion Calidad** |  | 25h | 2015-05-28 09:00 A | 2015-05-30 12:00 | 38 | 97% | 0.8h |  |  |  |  | 20h | 19.36h |  |  |
| 44 | 1.1.3.5.1 | Plan Gestion de Calidad | manual | 4h | 2015-05-28 09:00 A | 2015-05-28 13:00 |  | 99% | 0.04h |  |  |  |  | 4h | 3.96h |  |  |
| 45 | 1.1.3.5.2 | Metricas de Calidad |  | 4h | 2015-05-28 14:00 A | 2015-05-28 18:00 A | 44 | 100% |  |  |  |  |  | 4h | 4h |  |  |
| 46 | 1.1.3.5.3 | Linea Base de Calidad |  | 4h | 2015-05-29 14:00 A | 2015-05-29 18:00 | 45 | 95% | 0.2h | 0.95d | 0d | start no earlier than 2015-05-29 09:00 |  | 4h | 3.8h |  |  |
| 47 | 1.1.3.5.4 | Matriz de Actividades de Calidad |  | 8h | 2015-05-29 19:00 A | 2015-05-30 12:00 | 46 | 95% | 0.4h | 74.88d |  | finish no earlier than 2015-05-27 19:00 |  | 8h | 7.6h |  |  |
| 48 | 1.1.3.6 | **Gestion de RRHH** |  | 33h | 2015-06-01 09:00 A | 2015-06-04 18:00 | 43 | 99% | 0.27h |  |  |  | Analista | 56h | 22.81h | 52.47 |  |
| 49 | 1.1.3.6.1 | Matriz de Asignacion de Responsables | manual | 4h | 2015-06-01 09:00 A | 2015-06-01 13:00 A |  | 100% |  |  |  |  |  | 4h | 4h |  |  |
| 50 | 1.1.3.6.2 | Organigrama del Proyecto | manual | 4h | 2015-06-01 14:00 A | 2015-06-01 18:00 A | 49 | 100% |  |  |  |  |  | 4h | 4h |  |  |
| 51 | 1.1.3.6.3 | Descripcion de Roles |  | 4h | 2015-06-02 14:00 A | 2015-06-02 18:00 A | 50 | 100% |  |  |  | start no earlier than 2015-06-02 09:00 |  | 4h | 4h |  |  |
| 52 | 1.1.3.6.4 | Adquisicion del personal | manual | 3h | 2015-06-02 19:00 A | 2015-06-02 22:00 | 51 | 95% | 0.15h |  |  |  |  | 3h | 2.85h |  |  |
| 53 | 1.1.3.6.5 | Diagrama de Carga Personal |  | 4h | 2015-06-03 14:00 A | 2015-06-03 18:00 | 52 | 99% | 0.04h | 71.88d |  | start no earlier than 2015-06-03 09:00 |  | 4h | 3.96h |  |  |
| 54 | 1.1.3.6.6 | Plan de RRHH |  | 4h | 2015-06-03 19:00 A | 2015-06-03 23:00 A | 53 | 100% |  |  |  | start no earlier than 2015-06-03 09:00 |  | 4h | 4h |  |  |

| ID | WBS | Task | Type | Duration | Start | Finish | Predecessors | Complete | Remaining | Actual start | Actual finish | Total slack | Free slack | Constraint | Resources | Work | Actual work | Cost | Actual cost |
| --- | --- | --- | --- | --- | --- | --- | --- | --- | --- | --- | --- | --- | --- | --- | --- | --- | --- | --- | --- |
| 55 | 1.1.3.7 | **Gestion de Comunicación** |  | 17h | 2015-06-05 09:00 A | 2015-06-06 12:00 | 48 | 98% | 0.34h |  |  |  |  |  |  | 12h | 11.76h |  |  |
| 56 | 1.1.3.7.1 | Plan de Gestion de Comunicación | manual | 4h | 2015-06-05 09:00 A | 2015-06-05 13:00 A |  | 100% |  |  |  |  |  |  |  | 4h | 4h |  |  |
| 57 | 1.1.3.7.2 | Matriz de Comunicación del Proyecto |  | 4h | 2015-06-05 14:00 A | 2015-06-05 18:00 | 56 | 95% | 0.2h |  |  | 0.49d | 0d |  |  | 4h | 3.8h |  |  |
| 58 | 1.1.3.7.3 | Glosario de Terminologias |  | 4h | 2015-06-05 19:00 A | 2015-06-05 23:00 | 57 | 99% | 0.04h |  |  | 69.38d |  | start no earlier than 2015-06-03 09:00 |  | 4h | 3.96h |  |  |
| 59 | 1.1.3.8 | **Gestion de Riesgos** |  | 25h | 2015-06-08 09:00 A | 2015-06-10 18:00 | 55 | 90% | 2.5h |  |  |  |  |  | Programador 2 | 37h | 10.8h | 39.75 |  |
| 60 | 1.1.3.8.1 | Plan de Gestion de Riesgos | manual | 4h | 2015-06-08 09:00 A | 2015-06-08 13:00 A |  | 100% |  |  |  |  |  |  |  | 4h | 4h |  |  |
| 61 | 1.1.3.8.2 | Identificacion y Evaluacion Cualitativa de Riesgos | manual | 4h | 2015-06-08 14:00 A | 2015-06-08 18:00 A | 60 | 100% |  |  |  |  |  |  |  | 4h | 4h |  |  |
| 62 | 1.1.3.8.3 | Plan de Respuesta a Riesgos | manual | 4h | 2015-06-08 19:00 A | 2015-06-08 23:00 | 61 | 70% | 1.2h |  |  |  |  |  |  | 4h | 2.8h |  |  |
| 63 | 1.1.3.9 | **Gestion de Adquisiciones** |  | 17h | 2015-06-11 09:00 A | 2015-06-12 19:00 | 59 | 95% | 0.85h |  |  |  |  |  |  | 8h | 7.6h |  |  |
| 64 | 1.1.3.9.1 | Plan de Gestion de Adquisiciones | manual | 4h | 2015-06-11 09:00 A | 2015-06-11 13:00 |  | 95% | 0.2h |  |  |  |  |  |  | 4h | 3.8h |  |  |
| 65 | 1.1.3.9.2 | Matriz de Adquisiciones del Proyecto |  | 4h | 2015-06-11 14:00 A | 2015-06-11 18:00 | 64 | 95% | 0.2h |  |  | 64.88d |  | finish no earlier than 2015-06-06 19:00 |  | 4h | 3.8h |  |  |
| 66 | 1.1.3.10 | **Gestion de Interesados** |  | 1.25d | 2015-06-12 09:00 A | 2015-06-12 20:00 | 63 | 100% |  |  | 2015-06-12 15:00 |  |  |  |  | 6h | 6h |  |  |
| 67 | 1.1.3.10.1 | Plan de Gestion de Interesados | manual | 6h | 2015-06-12 09:00 A | 2015-06-12 15:00 A |  | 100% |  |  |  |  |  |  |  | 6h | 6h |  |  |
| 68 | 1.1.3.11 | **Metodologia UWE** |  | 8d | 2015-06-15 09:00 | 2015-06-23 17:00 | 66 | 99% | 0.08d | 2015-06-12 15:00 |  |  |  |  | Programador 2 | 128h | 63.36h | 105.36 | 3.6 |
| 69 | 1.1.3.11.1 | Modelo Entidad Relacion | manual | 2d | 2015-06-12 15:00 A | 2015-06-15 15:00 |  | 99% | 0.02d |  |  |  |  |  | Equipo de Computo | 16h | 15.84h | 0.9 | 0.9 |
| 70 | 1.1.3.11.2 | Modelo Logico | manual | 2d | 2015-06-16 17:00 A | 2015-06-18 17:00 | 69 | 99% | 0.02d |  |  |  |  |  | Equipo de Computo | 16h | 15.84h | 0.9 | 0.9 |
| 71 | 1.1.3.11.3 | Modelo Fisico | manual | 2d | 2015-06-18 17:00 A | 2015-06-20 11:00 | 70 | 99% | 0.02d |  |  |  |  |  | Equipo de Computo | 16h | 15.84h | 0.9 | 0.9 |
| 72 | 1.1.3.11.4 | Diagrama de navegacion | manual | 2d | 2015-06-20 11:00 A | 2015-06-23 17:00 | 71 | 99% | 0.02d |  |  |  |  |  | Equipo de Computo | 16h | 15.84h | 0.9 | 0.9 |
| 73 | 1.1.3.12 | Fin Fase | milestone, manual | 0d | 2015-06-23 17:00 | 2015-06-23 17:00 | 72 |  |  |  |  |  |  |  |  |  |  |  |  |
| 74 | 1.1.4 | **EJECUCION** |  | 17d | 2015-06-25 09:00 A | 2015-07-14 17:00 | 18 | 97% | 0.46d |  |  |  |  |  | Administrador | 204h | 42.8h | 254.4 |  |
| 75 | 1.1.4.1 | **Gestion de Integracion** |  | 8h | 2015-06-25 09:00 A | 2015-06-25 17:00 |  | 95% | 0.4h |  |  |  |  |  | Administrador | 16h | 7.6h | 12.72 |  |
| 76 | 1.1.4.1.1 | Gestionar el trabajo del proyecto | manual | 8h | 2015-06-25 09:00 A | 2015-06-25 17:00 |  | 95% | 0.4h |  |  |  |  |  |  | 8h | 7.6h |  |  |
| 77 | 1.1.4.2 | **Gestion de Calidad** |  | 2.75d | 2015-06-26 09:00 A | 2015-06-27 19:00 | 75 | 95% | 0.14d |  |  |  |  |  |  | 16h | 15.2h |  |  |
| 78 | 1.1.4.2.1 | Aseguramiento de la calidad | manual | 8h | 2015-06-26 09:00 A | 2015-06-26 17:00 |  | 95% | 0.4h |  |  |  |  |  |  | 8h | 7.6h |  |  |
| 79 | 1.1.4.2.2 | Datos de Desempeño del trabajo | manual | 8h | 2015-06-27 09:00 A | 2015-06-27 19:00 | 78 | 95% | 0.4h |  |  |  |  |  |  | 8h | 7.6h |  |  |

| ID | WBS | Task | Type | Duration | Start | Finish | Predecessors | Complete | Remaining | Total slack | Resources | Work | Actual work | Cost | Actual cost |
| --- | --- | --- | --- | --- | --- | --- | --- | --- | --- | --- | --- | --- | --- | --- | --- |
| 80 | 1.1.4.3 | **Gestion de RRHH** |  | 4h | 2015-06-29 09:00 A | 2015-06-29 13:00 | 77 | 99% | 0h |  | Analista; Programador 2 | 12h | 4h | 12.72 |  |
| 81 | 1.1.4.3.1 | Asignacion del personal al trabajo | manual | 4h | 2015-06-29 09:00 A | 2015-06-29 13:00 A |  | 100% |  |  |  | 4h | 4h |  |  |
| 82 | 1.1.4.4 | **Gestion de Comunicación** |  | 8h | 2015-06-30 09:00 A | 2015-06-30 17:00 | 80 | 99% | 0h |  | Administrador | 16h | 8h | 12.72 |  |
| 83 | 1.1.4.4.1 | Gestionar comunicaciones del proyecto | manual | 8h | 2015-06-30 09:00 A | 2015-06-30 17:00 A |  | 100% |  |  |  | 8h | 8h |  |  |
| 84 | 1.1.4.5 | **Gestion de Interesados** |  | 8h | 2015-07-01 09:00 A | 2015-07-01 17:00 A | 82 | 100% |  |  |  | 8h | 8h |  |  |
| 85 | 1.1.4.5.1 | Gestionar participacion de los interesados | manual | 8h | 2015-07-01 09:00 A | 2015-07-01 17:00 A |  | 100% |  |  |  | 8h | 8h |  |  |
| 86 | 1.1.4.6 | Fin fase | milestone, manual | 0d | 2015-07-01 17:00 | 2015-07-01 17:00 | 85 |  |  |  |  |  |  |  |  |
| 87 | 1.1.5 | **SEGUIMIENTO Y CONTROL** |  | 26.25d | 2015-07-02 09:00 A | 2015-08-01 10:00 | 74 | 93% | 1.9d | 2.75d | Administrador | 654.5h | 551.08h | 690.57 | 550.49 |
| 88 | 1.1.5.1 | **Gestion de Integracion** |  | 25h | 2015-07-02 09:00 A | 2015-07-04 12:00 |  | 93% | 1.67h |  |  | 12h | 11.2h |  |  |
| 89 | 1.1.5.1.1 | Monitorear y Controlar el trabajo del proyecto | manual | 4h | 2015-07-02 09:00 A | 2015-07-02 13:00 |  | 90% | 0.4h |  |  | 4h | 3.6h |  |  |
| 90 | 1.1.5.1.2 | Aceptacion de cambios |  | 8h | 2015-07-03 09:00 A | 2015-07-03 17:00 | 89 | 95% | 0.4h | 1.12d |  | 8h | 7.6h |  |  |
| 91 | 1.1.5.2 | **Gestion del Alcance** |  | 17h | 2015-07-04 09:00 A | 2015-07-07 16:00 | 88 | 90% | 1.7h |  | Analista | 34h | 15.3h | 27.03 |  |
| 92 | 1.1.5.2.1 | Validar Alcance | manual | 8h | 2015-07-04 09:00 A | 2015-07-04 19:00 |  | 90% | 0.8h |  |  | 8h | 7.2h |  |  |
| 93 | 1.1.5.2.2 | Controlar Alcance | manual | 9h | 2015-07-06 14:00 A | 2015-07-07 15:00 | 92 | 90% | 0.9h |  |  | 9h | 8.1h |  |  |
| 94 | 1.1.5.3 | **Gestion del Tiempo** |  | 2d | 2015-07-08 09:00 A | 2015-07-09 17:00 | 91 | 90% | 0.2d |  | Administrador | 32h | 14.4h | 25.44 |  |
| 95 | 1.1.5.3.1 | Controlar Cronograma | manual | 2d | 2015-07-08 09:00 A | 2015-07-09 17:00 |  | 90% | 0.2d |  |  | 16h | 14.4h |  |  |
| 96 | 1.1.5.4 | **Gestion de Costos** |  | 2d | 2015-07-10 09:00 A | 2015-07-11 11:00 | 94 | 90% | 0.2d |  | Administrador | 32h | 14.4h | 25.44 |  |
| 97 | 1.1.5.4.1 | Controlar Costos | manual | 2d | 2015-07-10 09:00 A | 2015-07-11 11:00 |  | 90% | 0.2d |  |  | 16h | 14.4h |  |  |
| 98 | 1.1.5.5 | **Gestion de Calidad** |  | 2d | 2015-07-13 09:00 A | 2015-07-14 17:00 | 96 | 90% | 0.2d |  |  | 16h | 14.4h |  |  |
| 99 | 1.1.5.5.1 | Controlar calidad | manual | 2d | 2015-07-13 09:00 A | 2015-07-14 17:00 |  | 90% | 0.2d |  |  | 16h | 14.4h |  |  |
| 100 | 1.1.5.6 | **Gestion de Comunicaciones** |  | 2d | 2015-07-15 09:00 A | 2015-07-16 17:00 | 98 | 90% | 0.2d |  |  | 16h | 14.4h |  |  |
| 101 | 1.1.5.6.1 | Controlar comunicación | manual | 2d | 2015-07-15 09:00 A | 2015-07-16 17:00 |  | 90% | 0.2d |  |  | 16h | 14.4h |  |  |
| 102 | 1.1.5.7 | **Gestion de Riesgos** |  | 2d | 2015-07-17 09:00 A | 2015-07-18 11:00 | 100 | 90% | 0.2d |  | Programador 1 | 32h | 14.4h | 25.44 |  |
| 103 | 1.1.5.7.1 | Controlar Riesgos | manual | 2d | 2015-07-17 09:00 A | 2015-07-18 11:00 |  | 90% | 0.2d |  |  | 16h | 14.4h |  |  |

| ID | WBS | Task | Type | Duration | Start | Finish | Predecessors | Complete | Remaining | Actual start | Total slack | Free slack | Resources | Work | Actual work | Cost | Actual cost |
| --- | --- | --- | --- | --- | --- | --- | --- | --- | --- | --- | --- | --- | --- | --- | --- | --- | --- |
| 104 | 1.1.5.8 | **Gestion de Interesados** |  | 1.38d | 2015-07-20 09:00 A | 2015-07-21 17:00 A | 102 | 100% |  |  |  |  |  | 16h | 16h |  |  |
| 105 | 1.1.5.8.1 | Controlar Participacion de Interesados | manual | 2d | 2015-07-20 09:00 A | 2015-07-21 17:00 A |  | 100% |  |  |  |  |  | 16h | 16h |  |  |
| 106 | 1.1.5.9 | **Metodologia UWE** |  | 9.88d | 2015-07-21 17:00 A | 2015-08-01 10:00 | 104 | 95% | 0.49d |  | 2.75d |  | Programador 2; Equipo de Oficina [50%]; Programador 1 | 254.5h | 241.78h | 253.32 | 240.76 |
| 107 | 1.1.5.9.1 | Interfaces Abstractas | manual | 2d | 2015-07-21 17:00 A | 2015-07-23 17:00 |  | 95% | 0.1d |  |  |  | Equipo de Oficina [50%] | 8h | 7.6h | 0.15 | 0.15 |
| 108 | 1.1.5.9.2 | Definir StoryBoard | manual | 2d | 2015-07-25 09:00 A | 2015-07-28 15:00 | 107 | 95% | 0.1d |  |  |  | Equipo de Computo | 16h | 15.2h | 0.9 | 0.9 |
| 109 | 1.1.5.9.3 | Prototipos de Interfaces |  | 4.12d | 2015-07-28 15:00 A | 2015-08-01 10:00 | 108 | 95% | 0.21d |  | 2.75d | 0d | Equipo de Computo | 33h | 31.35h | 0.9 | 0.9 |
| 110 | 1.1.5.10 | Fin Fase | milestone | 0d | 2015-08-01 10:00 | 2015-08-01 10:00 | 109 |  |  |  | 2.75d |  |  |  |  |  |  |
| 111 | 1.1.6 | **CIERRE** |  | 18.38d | 2015-08-05 09:00 A | 2015-08-26 17:00 | 87 | 99% | 0.07d |  | 0d |  | Administrador; Analista | 659h | 464.24h | 777.48 | 468.95 |
| 112 | 1.1.6.1 | **Gestion de Integracion** |  | 6.12d | 2015-08-05 09:00 A | 2015-08-11 18:00 |  | 99% | 0d |  |  |  | Analista | 89h | 40h | 77.91 |  |
| 113 | 1.1.6.1.1 | Transferencia de producto | manual | 3d | 2015-08-05 09:00 A | 2015-08-07 17:00 A |  | 100% |  |  |  |  |  | 24h | 24h |  |  |
| 114 | 1.1.6.1.2 | Actualizaciones de documentos | manual | 2d | 2015-08-07 17:00 A | 2015-08-10 17:00 A | 113 | 100% |  |  |  |  |  | 16h | 16h |  |  |
| 115 | 1.1.6.2 | **Gestion de Adquisiciones** |  | 6d | 2015-08-13 09:00 | 2015-08-19 17:00 | 112 | 99% | 0d | 2015-08-10 17:00 |  |  | Analista | 108h | 60h | 77.37 | 1.05 |
| 116 | 1.1.6.2.1 | Adquisiciones cerradas | manual | 3d | 2015-08-10 17:00 A | 2015-08-13 17:00 A |  | 100% |  |  |  |  | Equipo de Computo; Equipo de Oficina [50%] | 36h | 36h | 1.05 | 1.05 |
| 117 | 1.1.6.2.2 | Actualizaciones de documentos | manual | 3d | 2015-08-15 11:00 A | 2015-08-19 17:00 A | 116 | 100% |  |  |  |  |  | 24h | 24h |  |  |
| 118 | 1.1.6.3 | **Metodologia UWE** |  | 6d | 2015-08-20 09:00 | 2015-08-26 17:00 | 115 | 99% | 0.06d | 2015-08-19 17:00 |  |  | Programador 2; Programador 1 | 168h | 71.28h | 154.74 | 2.1 |
| 119 | 1.1.6.3.1 | Prueba del Sistema | manual | 3d | 2015-08-19 17:00 A | 2015-08-22 11:00 |  | 99% | 0.03d |  |  |  | Equipo de Computo; Equipo de Oficina [50%] | 36h | 35.64h | 1.05 | 1.05 |
| 120 | 1.1.6.3.2 | Plan de Instalacion | manual | 3d | 2015-08-22 11:00 A | 2015-08-26 17:00 | 119 | 99% | 0.03d |  |  |  | Equipo de Computo; Equipo de Oficina [50%] | 36h | 35.64h | 1.05 | 1.05 |
| 121 | 1.1.6.4 | Fin fase | milestone, manual | 0d | 2015-08-26 17:00 | 2015-08-26 17:00 | 120 |  |  |  |  |  |  |  |  |  |  |
| 122 | 2 | FIN | milestone | 0d | 2015-08-26 17:00 | 2015-08-26 17:00 | 121 |  |  |  | 0d |  |  |  |  |  |  |
