# MI CASA

Schedule from MS Project, 2016-12-01 to 2017-01-23, costs in $, A marks actual dates.
Contrucción
Heaven

## Calendars

- Estándar: Mon-Fri 07:00-12:00, 13:00-17:00; Sat 07:00-12:00; Sun off.
- MI CASA: Mon-Fri 07:00-12:00, 13:00-17:00; Sat 07:00-12:00; Sun off.

## Resources

| Resource | Group | Unit | Rate | Cost per use |
| --- | --- | --- | --- | --- |
| Luis Soria | Carpintero |  | 10000 |  |
| Manuel Peña | Carpintero |  | 8000 |  |
| Juan Salas | Electricista |  | 10000 |  |
| Rosa Perez | Decoradora |  |  | 100000 |
| Julio Rosas | Obreo |  | 8000 |  |
| Pablo Samaniego | Obreo |  | 8000 |  |
| Mario Hinojoza | Obreo |  | 8000 |  |
| Ricardo Merino | Obreo |  | 8000 |  |
| Oscar Paredes | Albañil |  | 10000 |  |
| Nicolas Mendoza | Albañil |  | 8000 |  |
| Pedro Martinez | Plomero |  | 10000 |  |
| Mezcladora | Equipo |  | 10000 | 10000 |
| Computador | Equipo |  |  | 60000 |
| Cemento | Material | Bulto x 50 Kg | 50000 |  |
| Ladrillos | Material | Por Millar | 220000 |  |
| Tuberias de agua | Material | metro | 4000 |  |
| Cable Electrico | Material | metro | 4000 |  |
| Madera | Material | Pies2 | 6000 |  |
| Loseta | Material | metro2 | 14000 |  |
| Arena | Material | bulto x 50 Kg | 2000 |  |
| Transporte | Costo |  |  |  |
| Asado | Costo |  |  |  |
| Leoncio Haro | Plomero |  | 8000 |  |

## Schedule

| ID | WBS | Task | Type | Duration | Start | Finish | Predecessors | Complete | Remaining | Baseline start | Baseline finish | Baseline duration | Total slack | Constraint | Calendar | Resources | Work | Actual work | Cost | Baseline cost | Actual cost |
| --- | --- | --- | --- | --- | --- | --- | --- | --- | --- | --- | --- | --- | --- | --- | --- | --- | --- | --- | --- | --- | --- |
| 1 | 1 | **Proyecto Construccion Mi Casa** |  | 47.3d | 2016-12-01 A | 2017-01-23 |  | 18% | 38.76d | 2016-12-01 | 2017-01-23 | 47.3d | 0d |  |  |  | 916.8h | 240h | 20,965,200 | 13,683,200 | 6,128,000 |
| 2 | 1.1 | **Reunion** |  | 37.62d | 2016-12-05 | 2017-01-16 |  |  |  | 2016-12-05 | 2017-01-16 | 37.62d | 6.8d |  | MI CASA |  |  |  |  |  |  |
| 3 | 1.1.1 | Reunion 1 |  | 1h | 2016-12-05 | 2016-12-05 |  |  |  | 2016-12-05 | 2016-12-05 | 1h | 44.3d | start no earlier than 2016-12-05 | MI CASA |  |  |  |  |  |  |
| 4 | 1.1.2 | Reunion 2 |  | 1h | 2016-12-19 | 2016-12-19 |  |  |  | 2016-12-19 | 2016-12-19 | 1h | 31.8d | start no earlier than 2016-12-19 | MI CASA |  |  |  |  |  |  |
| 5 | 1.1.3 | Reunion 3 |  | 1h | 2017-01-02 | 2017-01-02 |  |  |  | 2017-01-02 | 2017-01-02 | 1h | 19.3d | start no earlier than 2017-01-02 | MI CASA |  |  |  |  |  |  |
| 6 | 1.1.4 | Reunion 4 |  | 1h | 2017-01-16 | 2017-01-16 |  |  |  | 2017-01-16 | 2017-01-16 | 1h | 6.8d | start no earlier than 2017-01-16 | MI CASA |  |  |  |  |  |  |
| 7 | 1.2 | **Fase Cimientos** |  | 4d | 2016-12-01 A | 2016-12-06 |  | 99% | 0d | 2016-12-01 | 2016-12-06 | 4d | 0d |  |  |  | 112h | 112h | 3,696,000 | 3,696,000 | 3,696,000 |
| 8 | 1.2.1 | Preparar terreno |  | 1d | 2016-12-01 A | 2016-12-02 A |  | 100% |  | 2016-12-01 | 2016-12-02 | 1d |  |  |  | Julio Rosas; Pablo Samaniego | 16h | 16h | 128,000 | 128,000 | 128,000 |
| 9 | 1.2.2 | Hacer la base |  | 3d | 2016-12-02 A | 2016-12-06 A | 8 | 100% |  | 2016-12-02 | 2016-12-06 | 3d |  |  |  | Arena [150 bulto x 50 Kg]; Cemento [50 Bulto x 50 Kg]; Julio Rosas; Mario Hinojoza; Pablo Samaniego; Ricardo Merino | 96h | 96h | 3,568,000 | 3,568,000 | 3,568,000 |
| 10 | 1.2.3 | Fin de la fase | milestone | 0d | 2016-12-06 | 2016-12-06 | 9 |  |  | 2016-12-06 | 2016-12-06 |  | 0d |  |  |  |  |  |  |  |  |
| 11 | 1.3 | **Fase Estructural** |  | 25d | 2016-12-06 A | 2017-01-03 | 7 | 16% | 21d | 2016-12-06 | 2017-01-03 | 25d | 5d |  |  |  | 592h | 128h | 14,130,000 | 7,540,000 | 2,432,000 |
| 12 | 1.3.1 | Columnas y Vigas |  | 1w | 2016-12-06 A | 2016-12-12 |  | 80% | 0.2w | 2016-12-06 | 2016-12-12 | 1w | 0d |  |  | Arena [90 bulto x 50 Kg]; Cemento [30 Bulto x 50 Kg]; Mario Hinojoza; Nicolas Mendoza; Oscar Paredes; Ricardo Merino | 160h | 128h | 3,040,000 | 3,040,000 | 2,432,000 |
| 13 | 1.3.2 | Paredes |  | 2w | 2016-12-12 | 2016-12-22 | 12 |  |  | 2016-12-12 | 2016-12-22 | 2w | 0d |  |  | Arena [30 bulto x 50 Kg]; Cemento [10 Bulto x 50 Kg]; Ladrillos [5 Por Millar]; Nicolas Mendoza; Oscar Paredes | 160h |  | 3,100,000 | 1,712,000 |  |
| 14 | 1.3.3 | Piso |  | 2d | 2016-12-22 | 2016-12-24 | 13SS |  |  | 2016-12-22 | 2016-12-24 | 2d | 0d |  |  | Arena [90 bulto x 50 Kg]; Cemento [30 Bulto x 50 Kg]; Loseta [100 metro2]; Mario Hinojoza; Oscar Paredes; Ricardo Merino | 48h |  | 3,496,000 | 482,000 |  |
| 15 | 1.3.4 | Encofrado Techo |  | 7d | 2016-12-24 | 2017-01-02 | 14, 13 |  |  | 2016-12-24 | 2017-01-02 | 7d | 0d |  |  | Julio Rosas; Mario Hinojoza; Pablo Samaniego | 168h |  | 1,344,000 | 1,344,000 |  |
| 16 | 1.3.5 | Llenado Techo |  | 1d | 2017-01-02 | 2017-01-03 | 15 |  |  | 2017-01-02 | 2017-01-03 | 1d | 0d |  |  | Arena [120 bulto x 50 Kg]; Cemento [40 Bulto x 50 Kg]; Julio Rosas; Ladrillos [1 Por Millar]; Mario Hinojoza; Mezcladora; Nicolas Mendoza; Oscar Paredes; Pablo Samaniego; Ricardo Merino | 56h |  | 3,150,000 | 962,000 |  |
| 17 | 1.3.6 | Fin de la fase | milestone | 0d | 2017-01-03 | 2017-01-03 | 16 |  |  | 2017-01-03 | 2017-01-03 |  | 5d |  |  |  |  |  |  |  |  |
| 18 | 1.4 | **Fase Mecanica** |  | 5.3d | 2017-01-09 | 2017-01-13 | 11 |  |  | 2017-01-09 | 2017-01-13 | 5.3d | 0d |  |  |  | 52.8h |  | 1,471,200 | 1,127,200 |  |
| 19 | 1.4.1 | Plomeria |  | 1.3d | 2017-01-09 | 2017-01-10 | 16FS+5d |  |  | 2017-01-09 | 2017-01-10 | 1.3d | 0d |  |  | Pedro Martinez; Arena [4.5 bulto x 50 Kg]; Cemento [1.5 Bulto x 50 Kg]; Leoncio Haro; Tuberias de agua [30 metro] | 20.8h |  | 391,200 | 243,200 |  |
| 20 | 1.4.2 | Electricidad |  | 3.5d | 2017-01-10 | 2017-01-13 | 19 |  |  | 2017-01-10 | 2017-01-13 | 3.5d | 0d |  |  | Cable Electrico [50 metro]; Juan Salas | 32h |  | 1,080,000 | 884,000 |  |
| 21 | 1.4.3 | Fin de la fase | milestone | 0d | 2017-01-13 | 2017-01-13 | 20 |  |  | 2017-01-13 | 2017-01-13 |  | 0d |  |  |  |  |  |  |  |  |
| 22 | 1.5 | **Fase Acabado Exterior e Interior** |  | 8d | 2017-01-13 | 2017-01-23 | 18 |  |  | 2017-01-13 | 2017-01-23 | 8d | 0d |  |  |  | 160h |  | 1,668,000 | 1,320,000 |  |
| 23 | 1.5.1 | Colocar Puertas |  | 3d | 2017-01-13 | 2017-01-17 | 21 |  |  | 2017-01-13 | 2017-01-17 | 3d | 0d |  |  | Luis Soria; Madera [40 Pies2]; Manuel Peña | 48h |  | 672,000 | 438,000 |  |
| 24 | 1.5.2 | ColocarVentanas |  | 4d | 2017-01-13 | 2017-01-21 | 23SS |  |  | 2017-01-13 | 2017-01-21 | 4d | 0d | start no earlier than 2017-01-12 |  | Luis Soria; Madera [20 Pies2]; Manuel Peña | 64h |  | 696,000 | 582,000 |  |
| 25 | 1.5.3 | Decoracion |  | 3d | 2017-01-19 | 2017-01-23 | 24FS-5% |  |  | 2017-01-19 | 2017-01-23 | 3d | 0d |  |  | Computador; Rosa Perez | 48h |  | 160,000 | 160,000 |  |
| 26 | 1.5.4 | Fin de la fase | milestone | 0d | 2017-01-23 | 2017-01-23 | 25 |  |  | 2017-01-23 | 2017-01-23 |  | 0d |  |  | Asado; Transporte |  |  | 140,000 | 140,000 |  |

Notes:
- 16: las personas involucradas tiene un sobrecosto del 50%
